# cronograma_actividades_vg

Schedule from MS Project, 2015-10-28 to 2016-01-29, status date 2014-12-30, A marks actual dates.
in

## Calendars

- Estándar: Mon-Fri 09:00-13:00, 15:00-19:00; Sat-Sun off. Exceptions (off unless hours are given): 2015-12-08, 2015-12-25, 2016-01-01.

## Resources

| Resource |
| --- |
| GG |
| PROG 1 |
| PROG 2 |
| MAPFRE |
| JP |
| ESPEC. COLOMBIA |
| PROG 3 |
| AF2 |
| AS |
| AS1 |
| AS2 |
| RC |
| HA |
| MC |
| PRG3 |
| JRaffo |
| MCalderon |
| JMansilla |
| PROGramador |
| Programador 1 |

## Schedule

| ID | WBS | Task | Type | Duration | Start | Finish | Complete | Remaining | Total slack | Constraint | Resources | Work | Actual work |
| --- | --- | --- | --- | --- | --- | --- | --- | --- | --- | --- | --- | --- | --- |
| 1 | 1 | **MAPFRE - HerramientaControlPolizaDctsPlanilla** |  | 45d | 2015-10-28 A | 2015-12-31 | 13% | 39.31d |  |  |  | 480h | 44h |
| 2 | 1.1 | Inicio | milestone | 0d | 2015-10-28 A | 2015-10-28 A | 100% |  |  |  |  |  |  |
| 3 | 1.2 | **Levantamiento de información** |  | 7d | 2015-10-28 A | 2015-11-05 | 29% | 5d | 58d |  |  | 56h | 16h |
| 4 | 1.2.1 | **Actividades Preliminares** |  | 3d | 2015-10-28 A | 2015-10-30 | 33% | 2d |  |  |  | 24h | 8h |
| 5 | 1.2.1.1 | Recepción Documentación Funcional (intro) |  | 1d | 2015-10-28 | 2015-10-28 |  |  | 2d |  | JRaffo | 8h |  |
| 6 | 1.2.1.2 | Revisión Documento Funcional (intro) |  | 2d | 2015-10-29 A | 2015-10-30 | 50% | 1d | 62d | finish no earlier than 2015-09-15 | JRaffo | 16h | 8h |
| 7 | 1.2.2 | **Actividades Documentos (Cronograma y Propuesta Económica)** |  | 4d | 2015-11-02 A | 2015-11-05 | 25% | 3d |  |  |  | 32h | 8h |
| 8 | 1.2.2.1 | **Definición del Alcance y Propusta Económica** |  | 4d | 2015-11-02 A | 2015-11-05 | 25% | 3d |  |  |  | 32h | 8h |
| 9 | 1.2.2.1.1 | Definición del Alcance Funcional |  | 2d | 2015-11-02 A | 2015-11-03 | 50% | 1d | 2d |  | JRaffo | 16h | 8h |
| 10 | 1.2.2.1.2 | Requerimientos Funcionales |  | 1d | 2015-11-04 A | 2015-11-04 |  | 1d | 1d |  | JRaffo | 8h |  |
| 11 | 1.2.2.1.3 | Elaboracion de Cronograma y Propuesta Económica |  | 1d | 2015-11-05 | 2015-11-05 |  |  | 58d | start no earlier than 2015-11-05 | JRaffo | 8h |  |
| 12 | 1.2.2.1.4 | Hito: Documentos cronograma y propuesta económica | milestone | 0d | 2015-11-05 A | 2015-11-05 A | 100% |  |  |  |  |  |  |
| 13 | 1.3 | **Actividades para el analisis funcional** |  | 2d | 2015-11-06 A | 2015-11-09 | 75% | 0.5d |  |  |  | 16h | 12h |
| 14 | 1.3.1 | **Analisis Funcional** |  | 2d | 2015-11-06 A | 2015-11-09 | 75% | 0.5d |  |  |  | 16h | 12h |
| 15 | 1.3.1.1 | Analisis funcional DF |  | 2d | 2015-11-06 A | 2015-11-09 | 75% | 0.5d | 0d |  | JRaffo | 16h | 12h |
| 16 | 1.3.2 | Hito: Documentos Analisis funcional (DF) | milestone | 0d | 2015-11-09 A | 2015-11-09 A | 100% |  |  |  |  |  |  |
| 17 | 1.4 | **Analisis para el diseño técnico** |  | 2d | 2015-11-10 A | 2015-11-11 | 99% | 0d |  |  |  | 16h | 16h |
| 18 | 1.4.1 | **Diseño técnico** |  | 2d | 2015-11-10 A | 2015-11-11 A | 100% |  |  |  |  | 16h | 16h |
| 19 | 1.4.1.1 | Analisis técnico DT |  | 2d | 2015-11-10 A | 2015-11-11 A | 100% |  |  |  | JRaffo | 16h | 16h |
| 20 | 1.4.2 | Hito: Documento de Diseno tecnico (DT) | milestone | 0d | 2015-11-11 | 2015-11-11 |  |  | 55d | start no earlier than 2015-11-11 |  |  |  |
| 21 | 1.5 | **Plan de pruebas y casos de Prueba** |  | 2d | 2015-11-12 | 2015-11-13 |  |  |  |  |  | 16h |  |
| 22 | 1.5.1 | Analisis para el plan de pruebas |  | 2d | 2015-11-12 | 2015-11-13 |  |  | 52d | start no earlier than 2015-11-12 | JRaffo | 16h |  |
| 23 | 1.5.2 | Documento de Cuaderno de Pruebas (CP) | milestone | 0d | 2015-11-13 | 2015-11-13 |  |  | 53d | start no earlier than 2015-11-13 |  |  |  |
| 24 | 1.6 | **Construcción** |  | 23d | 2015-11-16 | 2015-12-17 |  |  |  |  | JRaffo | 352h |  |
| 25 | 1.6.1 | **Construcción aplicativo Web** |  | 20d | 2015-11-16 | 2015-12-14 |  |  |  |  |  | 160h |  |
| 26 | 1.6.1.1 | **Construcción** |  | 20d | 2015-11-16 | 2015-12-14 |  |  |  |  |  | 160h |  |
| 27 | 1.6.1.1.1 | Desarrollo + Pruebas unitarias |  | 20d | 2015-11-16 | 2015-12-14 |  |  | 32d | start no earlier than 2015-11-16 | JRaffo | 160h |  |
| 28 | 1.6.1.1.2 | Hito: Termino Construcción | milestone | 0d | 2015-12-14 | 2015-12-14 |  |  | 33d | start no earlier than 2015-12-14 |  |  |  |

Notes:
- 15: Consulta cuenta corriente
- 19: Interfase de cuenta corriente

| ID | WBS | Task | Type | Duration | Start | Finish | Total slack | Constraint | Resources | Work |
| --- | --- | --- | --- | --- | --- | --- | --- | --- | --- | --- |
| 29 | 1.6.2 | **Pase a Pruebas** |  | 2d | 2015-12-15 | 2015-12-16 |  |  |  | 8h |
| 30 | 1.6.2.1 | Soporte para pase a pruebas |  | 0.5d | 2015-12-15 | 2015-12-15 | 31.5d | start no earlier than 2015-12-15 | JRaffo | 4h |
| 31 | 1.6.2.2 | Acta de coordinación de pase |  | 0.5d | 2015-12-15 | 2015-12-15 | 31.5d | start no earlier than 2015-12-15 | JRaffo | 4h |
| 32 | 1.6.2.3 | Puesta en pruebas |  | 1d | 2015-12-16 | 2015-12-16 | 30d | start no earlier than 2015-12-16 |  |  |
| 33 | 1.7 | **Pruebas de usuario** |  | 6d | 2015-12-17 | 2015-12-24 |  |  |  | 16h |
| 34 | 1.7.1 | Pruebas de usuario |  | 3d | 2015-12-17 | 2015-12-21 | 27d | start no earlier than 2015-12-17 |  |  |
| 35 | 1.7.2 | soporte a pruebas de usuario |  | 2d | 2015-12-22 | 2015-12-23 | 25d | start no earlier than 2015-12-22 | JRaffo | 16h |
| 36 | 1.7.3 | Aprobación d e pruebas |  | 1d | 2015-12-24 | 2015-12-24 | 24d | start no earlier than 2015-12-24 |  |  |
| 37 | 1.7.4 | Hito: Termino de Pruebas de Usuario | milestone | 0d | 2015-12-24 | 2015-12-24 | 25d | start no earlier than 2015-12-24 |  |  |
| 38 | 1.8 | **Pase a Producción** |  | 4d | 2015-12-28 | 2015-12-31 |  |  |  | 8h |
| 39 | 1.8.1 | Soporte pase a produccion |  | 1d | 2015-12-28 | 2015-12-28 | 23d | start no earlier than 2015-12-25 |  |  |
| 40 | 1.8.2 | Acta de coordinación de pase |  | 1d | 2016-01-29 | 2016-01-29 | 0d | start no earlier than 2016-01-29 | JRaffo | 8h |
| 41 | 1.8.3 | Puesta en producción |  | 0.5d | 2015-12-31 | 2015-12-31 | 20.06d | finish no earlier than 2015-12-31 |  |  |
| 42 | 1.8.4 | Hito: Termino del proyecto | milestone | 0d | 2015-12-31 | 2015-12-31 | 21d | start no earlier than 2015-12-31 |  |  |
