# cronograma_actividades_vg

Schedule from MS Project, 2015-08-04 to 2015-08-18, status date 2014-12-30, A marks actual dates.
in

## Calendars

- Estándar: Mon-Fri 09:00-13:00, 15:00-19:00; Sat-Sun off.

## Resources

| Resource |
| --- |
| GG |
| PROG 1 |
| PROG 2 |
| MAPFRE |
| JP |
| ESPEC. COLOMBIA |
| PROG 3 |
| AF2 |
| AS |
| AS1 |
| AS2 |
| RC |
| HA |
| MC |
| PRG3 |
| JRaffo |
| MAurizio |

## Schedule

| ID | WBS | Task | Type | Duration | Start | Finish | Complete | Remaining | Total slack | Constraint | Resources | Work | Actual work |
| --- | --- | --- | --- | --- | --- | --- | --- | --- | --- | --- | --- | --- | --- |
| 1 | 1 | **MAPFRE - GeneracionArchivoReporteFatcaSUNAT** |  | 10d | 2015-08-04 A | 2015-08-18 | 23% | 7.73d | 0d |  |  | 80h | 20h |
| 2 | 1.1 | Inicio | milestone | 0d | 2015-08-04 A | 2015-08-04 A | 100% |  |  |  |  |  |  |
| 3 | 1.2 | **Levantamiento de información** |  | 0.5d | 2015-08-04 | 2015-08-04 |  |  |  |  |  | 4h |  |
| 4 | 1.2.1 | Recepción Documentación Funcional (intro) | milestone | 0d | 2015-08-04 | 2015-08-04 |  |  | 0.5d |  | JRaffo |  |  |
| 5 | 1.2.2 | Revisión Documento Funcional (intro) |  | 0.25d | 2015-08-04 | 2015-08-04 |  |  | 0.25d |  | JRaffo | 2h |  |
| 6 | 1.2.3 | Elaboracion de Cronograma y Propuesta Económica |  | 0.25d | 2015-08-04 | 2015-08-04 |  |  | 0.25d |  | JRaffo | 2h |  |
| 7 | 1.3 | **Analisis para el diseño funcional y técnico** |  | 1d | 2015-08-04 A | 2015-08-04 | 17% | 0.83d |  |  |  | 24h | 4h |
| 8 | 1.3.1 | Analisis funcional (DF) |  | 0.5d | 2015-08-04 A | 2015-08-04 | 50% | 0.25d | 0.5d |  | JRaffo | 4h | 2h |
| 9 | 1.3.2 | Revisión con Analista MAPFRE |  | 1d | 2015-08-04 | 2015-08-04 |  |  | 0d |  | MAurizio | 8h |  |
| 10 | 1.3.3 | Hito: Documentos de Analisis funcional (DF) Revisado y aprobado | milestone | 0d | 2015-08-04 A | 2015-08-04 A | 100% |  |  |  |  |  |  |
| 11 | 1.3.4 | Analisis Diseño técnico (DT) |  | 0.5d | 2015-08-04 A | 2015-08-04 | 50% | 0.25d | 0.5d |  | JRaffo | 4h | 2h |
| 12 | 1.3.5 | Revisión con Analista MAPFRE |  | 1d | 2015-08-04 | 2015-08-04 |  |  | 0d |  | MAurizio | 8h |  |
| 13 | 1.3.6 | Documento de Diseno tecnico (DT) Revisado y aprobado | milestone | 0d | 2015-08-04 | 2015-08-04 |  |  | 10d | start no earlier than 2015-08-04 |  |  |  |
| 14 | 1.4 | **Plan de pruebas y casos de Prueba** |  | 1d | 2015-08-05 | 2015-08-05 |  |  |  |  |  | 16h |  |
| 15 | 1.4.1 | Analisis para el plan de pruebas |  | 1d | 2015-08-05 | 2015-08-05 |  |  | 8d | start no earlier than 2015-08-05 | JRaffo | 8h |  |
| 16 | 1.4.2 | Revisión con Analista MAPFRE |  | 1d | 2015-08-05 | 2015-08-05 |  |  | 0d |  | MAurizio | 8h |  |
| 17 | 1.4.3 | Aprobacion del Cuaderno de Pruebas (CP) | milestone | 0d | 2015-08-05 | 2015-08-05 |  |  | 9d | start no earlier than 2015-08-05 |  |  |  |
| 18 | 1.5 | **Construcción y Pruebas Unitarias** |  | 2.5d | 2015-08-06 A | 2015-08-10 | 80% | 0.5d |  |  |  | 20h | 16h |
| 19 | 1.5.1 | Desarrollo + Pruebas unitarias |  | 2d | 2015-08-06 A | 2015-08-07 A | 100% |  |  |  | JRaffo | 16h | 16h |
| 20 | 1.5.2 | Puesta en pruebas |  | 0.5d | 2015-08-10 | 2015-08-10 |  |  | 5.5d | start no earlier than 2015-08-10 | JRaffo | 4h |  |
| 21 | 1.6 | Hito: Termino Construcción | milestone | 0d | 2015-08-10 | 2015-08-10 |  |  | 6d | start no earlier than 2015-08-10 |  |  |  |
| 22 | 1.7 | **Pruebas de usuario** |  | 2d | 2015-08-11 | 2015-08-12 |  |  |  |  |  | 16h |  |
| 23 | 1.7.1 | Pruebas de usuario |  | 1d | 2015-08-11 | 2015-08-11 |  |  | 1d |  |  |  |  |
| 24 | 1.7.2 | Ajustes SUNAT |  | 2d | 2015-08-11 | 2015-08-12 |  |  | 0d |  | JRaffo | 16h |  |
| 25 | 1.8 | Hito: Termino de Pruebas de Usuario | milestone | 0d | 2015-08-12 | 2015-08-12 |  |  | 4d | start no earlier than 2015-08-12 |  |  |  |
| 26 | 1.9 | Hito: Termino del proyecto | milestone | 0d | 2015-08-18 | 2015-08-18 |  |  | 0d | start no earlier than 2015-08-18 |  |  |  |

Notes:
- 8: Consulta cuenta corriente
- 11: Interfase de cuenta corriente
