# cronograma_actividades_vg

Schedule from MS Project, 2015-07-15 to 2015-10-13, status date 2014-12-30, A marks actual dates.
in

## Calendars

- Estándar: Mon-Fri 09:00-13:00, 15:00-19:00; Sat-Sun off. Exceptions (off unless hours are given): 2015-07-28, 2015-07-29 09:00-13:00, 15:00-19:00, 2015-08-22 09:00-13:00, 15:00-19:00, 2015-10-08.

## Resources

| Resource |
| --- |
| GG |
| PROG 1 |
| PROG 2 |
| MAPFRE |
| JP |
| ESPEC. COLOMBIA |
| PROG 3 |
| AF2 |
| AS |
| AS1 |
| AS2 |
| RC |
| HA |
| MC |
| PRG3 |

## Schedule

| ID | WBS | Task | Type | Duration | Start | Finish | Complete | Remaining | Total slack | Constraint |
| --- | --- | --- | --- | --- | --- | --- | --- | --- | --- | --- |
| 1 | 1 | **MAPFRE - Generacion Cartas de Aniversario** |  | 64d | 2015-07-15 A | 2015-10-13 | 20% | 51.16d | 0d |  |
| 2 | 1.1 | Inicio | milestone | 0d | 2015-07-15 A | 2015-07-15 A | 100% |  |  |  |
| 3 | 1.2 | **Levantamiento de información** |  | 8d | 2015-07-15 A | 2015-07-24 | 44% | 4.44d |  |  |
| 4 | 1.2.1 | **Actividades Preliminares** |  | 3d | 2015-07-15 A | 2015-07-17 | 33% | 2d |  |  |
| 5 | 1.2.1.1 | Recepción Documentación Funcional (intro) | milestone | 0d | 2015-07-15 A | 2015-07-15 A | 100% |  |  |  |
| 6 | 1.2.1.2 | Revisión Documento Funcional (intro) |  | 3d | 2015-07-15 A | 2015-07-17 | 33% | 2d | 0d |  |
| 7 | 1.2.2 | **Actividades Documentos (Cronograma y Propuesta Económica)** |  | 5d | 2015-07-20 A | 2015-07-24 | 50% | 2.5d |  |  |
| 8 | 1.2.2.1 | **Definición del Alcance y Propusta Económica** |  | 5d | 2015-07-20 A | 2015-07-24 | 50% | 2.5d |  |  |
| 9 | 1.2.2.1.1 | Definición del Alcance Funcional |  | 2d | 2015-07-20 A | 2015-07-21 | 50% | 1d | 3d |  |
| 10 | 1.2.2.1.2 | Requerimientos Funcionales |  | 3d | 2015-07-21 A | 2015-07-23 | 67% | 1d | 1d |  |
| 11 | 1.2.2.1.3 | Elaboracion de Cronograma y Propuesta Económica |  | 1d? | 2015-07-20 | 2015-07-20 |  |  | 4d |  |
| 12 | 1.2.2.1.4 | Hito: Documentos cronograma y propuesta económica | milestone | 0d | 2015-07-23 A | 2015-07-23 A | 100% |  |  |  |
| 13 | 1.3 | **Actividades para el analisis funcional** |  | 8d | 2015-07-27 A | 2015-08-06 | 31% | 5.5d | 48d |  |
| 14 | 1.3.1 | **Analisis Funcional** |  | 3d | 2015-07-27 A | 2015-07-30 | 50% | 1.5d |  |  |
| 15 | 1.3.1.1 | Analisis funcional RF Procesar Cartas |  | 3d | 2015-07-27 A | 2015-07-30 | 50% | 1.5d | 0d |  |
| 16 | 1.3.2 | Hito: Documentos Analisis funcional (DF) | milestone | 0d | 2015-07-30 A | 2015-07-30 A | 100% |  |  |  |
| 17 | 1.3.3 | Revisión 1: con Analista MAPFRE |  | 5d | 2015-07-31 A | 2015-08-06 | 20% | 4d | 48d | start no earlier than 2014-12-17 |
| 18 | 1.4 | Hito: Documentos de Analisis funcional (DF) Revisado y aprobado | milestone | 0d | 2015-08-06 A | 2015-08-06 A | 100% |  |  |  |
| 19 | 1.5 | **Analisis para el diseño técnico** |  | 11d | 2015-08-07 A | 2015-08-21 | 50% | 5.5d | 37d |  |
| 20 | 1.5.1 | Planificación de actividades de diseño y construcción |  | 2d | 2015-08-07 A | 2015-08-10 | 50% | 1d | 46d |  |
| 21 | 1.5.2 | **Diseño técnico** |  | 9d | 2015-08-11 A | 2015-08-21 | 50% | 4.5d | 37d |  |
| 22 | 1.5.2.1 | Analisis técnico DT Procesar Cartas |  | 4d | 2015-08-11 A | 2015-08-14 A | 100% |  |  |  |
| 23 | 1.5.2.2 | Documento de Diseno tecnico DT | milestone | 0d | 2015-08-14 | 2015-08-14 |  |  | 43d | start no earlier than 2015-08-14 |
| 24 | 1.5.2.3 | Revisión y Aprobación por el AF Mapfre |  | 5d | 2015-08-17 A | 2015-08-21 | 10% | 4.5d | 37d |  |
| 25 | 1.5.2.4 | Documento de Diseno tecnico DT Aprobado | milestone | 0d | 2015-08-21 | 2015-08-21 |  |  | 38d | start no earlier than 2015-08-21 |
| 26 | 1.6 | Hito: Termino del Análisis Técnico | milestone | 0d | 2015-08-21 | 2015-08-21 |  |  | 38d | start no earlier than 2015-08-21 |

Notes:
- 15: Consulta cuenta corriente
- 22: Interfase de cuenta corriente

| ID | WBS | Task | Type | Duration | Start | Finish | Complete | Remaining | Total slack | Constraint |
| --- | --- | --- | --- | --- | --- | --- | --- | --- | --- | --- |
| 27 | 1.7 | **Plan de pruebas y casos de Prueba** |  | 6d | 2015-08-17 | 2015-08-22 |  |  |  |  |
| 28 | 1.7.1 | Analisis para el plan de pruebas |  | 1d | 2015-08-17 | 2015-08-17 |  |  | 41d | start no earlier than 2015-08-17 |
| 29 | 1.7.2 | Documento de Cuaderno de Pruebas (CP) | milestone | 0d | 2015-08-17 | 2015-08-17 |  |  | 6d |  |
| 30 | 1.7.3 | Aprobación del plan de pruebas por el AF Mapfre |  | 5d | 2015-08-17 | 2015-08-21 |  |  | 37d | start no earlier than 2015-08-17 |
| 31 | 1.7.4 | Aprobacion del Cuaderno de Pruebas (CP) | milestone | 0d | 2015-08-21 | 2015-08-21 |  |  | 38d | start no earlier than 2015-08-21 |
| 32 | 1.8 | **Construcción y Pruebas Unitarias** |  | 14d | 2015-08-17 A | 2015-09-02 | 29% | 9.96d |  |  |
| 33 | 1.8.1 | **Construcción Módulos** |  | 14d | 2015-08-17 A | 2015-09-02 | 29% | 9.96d |  |  |
| 34 | 1.8.1.1 | **Construcción Procesar Cartas** |  | 10d | 2015-08-17 A | 2015-08-27 | 38% | 6.25d |  |  |
| 35 | 1.8.1.1.1 | Desarrollo + Pruebas unitarias |  | 10d | 2015-08-17 A | 2015-08-27 | 38% | 6.25d | 0d |  |
| 36 | 1.8.1.2 | **Pase a Pruebas** |  | 4d | 2015-08-28 | 2015-09-02 |  |  |  |  |
| 37 | 1.8.1.2.1 | Soporte para pase a pruebas |  | 1d | 2015-08-28 | 2015-08-28 |  |  | 31d | start no earlier than 2015-08-28 |
| 38 | 1.8.1.2.2 | Acta de coordinación de pase |  | 1d | 2015-08-31 | 2015-08-31 |  |  | 30d | start no earlier than 2015-08-31 |
| 39 | 1.8.1.2.3 | Puesta en pruebas |  | 1d | 2015-09-01 | 2015-09-01 |  |  | 29d | start no earlier than 2015-09-01 |
| 40 | 1.9 | Hito: Termino Construcción | milestone | 0d | 2015-09-01 | 2015-09-01 |  |  | 30d | start no earlier than 2015-09-01 |
| 41 | 1.10 | **Pruebas de usuario** |  | 5d | 2015-09-02 | 2015-09-08 |  |  |  |  |
| 42 | 1.10.1 | Pruebas de usuario |  | 2d | 2015-09-02 | 2015-09-03 |  |  | 3d |  |
| 43 | 1.10.2 | soporte a pruebas de usuario |  | 2d | 2015-09-04 | 2015-09-07 |  |  | 25d | start no earlier than 2015-09-04 |
| 44 | 1.10.3 | Aprobación de pruebas |  | 1d | 2015-09-08 | 2015-09-08 |  |  | 24d | start no earlier than 2015-09-08 |
| 45 | 1.11 | Hito: Termino de Pruebas de Usuario | milestone | 0d | 2015-09-09 | 2015-09-09 |  |  | 24d | start no earlier than 2015-09-09 |
| 46 | 1.12 | **Matriz de Incidencias** |  | 23d | 2015-09-10 | 2015-10-13 |  |  |  |  |
| 47 | 1.12.1 | El AF Mapfre ve otros proyectos en paralelo, algunos con carácter prioritarios (FATCA) |  | 15d | 2015-09-10 | 2015-09-30 |  |  | 8d |  |
| 48 | 1.12.2 | Incertidumbre por falta de conexión a base de datos y cambio constante de lugar de trabajo |  | 5d | 2015-09-30 | 2015-10-07 |  |  | 3.06d | finish no earlier than 2015-10-07 |
| 49 | 1.12.3 | Capacitaciones proveedor |  | 3d | 2015-10-09 | 2015-10-13 |  |  | 0d | start no earlier than 2015-10-08 |
| 50 | 1.13 | **Pase a Producción** |  | 4d | 2015-09-14 | 2015-09-17 |  |  |  |  |
| 51 | 1.13.1 | Soporte para pase a producción |  | 2d | 2015-09-14 | 2015-09-15 |  |  | 2d |  |
| 52 | 1.13.2 | Acta de coordinación de pase |  | 1d | 2015-09-16 | 2015-09-16 |  |  | 18d | start no earlier than 2015-09-16 |
| 53 | 1.13.3 | Puesta en producción |  | 0.5d | 2015-09-17 | 2015-09-17 |  |  | 17.5d | start no earlier than 2015-09-17 |
| 54 | 1.14 | Hito: Termino del proyecto | milestone | 0d | 2015-09-17 | 2015-09-17 |  |  | 18d | start no earlier than 2015-09-17 |
